# B组测试部分

Schedule from MS Project, 2017-03-14 to 2017-06-22, A marks actual dates.

## Calendars

- 标准: Mon-Sun 08:00-12:00, 13:00-17:00. Exceptions (off unless hours are given): 2017-03-18 08:00-12:00, 13:00-17:00.

## Resources

| Resource |
| --- |
| 胡明昊 |
| 汪晓燕 |
| 穆鹏飞 |
| 刘晔 |

## Schedule

| ID | WBS | Task | Type | Duration | Start | Finish | Predecessors | Complete | Actual start | Baseline start | Baseline finish | Baseline duration | Constraint | Resources | Work | Actual work |
| --- | --- | --- | --- | --- | --- | --- | --- | --- | --- | --- | --- | --- | --- | --- | --- | --- |
| 1 | 1 | **项目确定及介绍** |  | 3d | 2017-03-14 A | 2017-03-16 A |  | 100% |  | 2017-03-14 | 2017-03-16 | 3d |  |  | 26.4h | 26.4h |
| 2 | 1.1 | 个人工作记录模板制作 | manual | 1d | 2017-03-14 A | 2017-03-14 A |  | 100% |  | 2017-03-14 | 2017-03-14 | 1d |  | 胡明昊 [15%] | 1.2h | 1.2h |
| 3 | 1.2 | 会议记录模板制作 | manual | 1d | 2017-03-14 A | 2017-03-14 A |  | 100% |  | 2017-03-14 | 2017-03-14 | 1d |  | 胡明昊 [15%] | 1.2h | 1.2h |
| 4 | 1.3 | 项目前期调研，资料收集，汇总 | manual | 2d | 2017-03-14 A | 2017-03-15 A | 2, 3 | 100% |  | 2017-03-14 | 2017-03-15 | 2d |  | 汪晓燕 [50%] | 8h | 8h |
| 5 | 1.4 | 项目资料整理、精炼，项目介绍内容撰写 | manual | 1d | 2017-03-15 A | 2017-03-15 A | 4 | 100% |  | 2017-03-15 | 2017-03-15 | 1d |  | 刘晔 [25%] | 2h | 2h |
| 6 | 1.5 | 常见相似框架对比，找出当前框架优缺点 | manual | 1d | 2017-03-15 A | 2017-03-15 A | 4 | 100% |  | 2017-03-15 | 2017-03-15 | 1d |  | 穆鹏飞 [25%] | 3.75h | 3.75h |
| 7 | 1.6 | 框架本地搭建运行，编写小程序测试 | manual | 1d | 2017-03-15 A | 2017-03-15 A | 4 | 100% |  | 2017-03-15 | 2017-03-15 | 1d |  | 胡明昊 [50%] | 2.25h | 2.25h |
| 8 | 1.7 | PPT制作 | manual | 1d | 2017-03-16 A | 2017-03-16 A | 5, 6, 7 | 100% |  | 2017-03-16 | 2017-03-16 | 1d |  | 穆鹏飞 [50%] | 8h | 8h |
| 9 | 2 | **软件需求分析** |  | 20d | 2017-03-18 | 2017-04-06 A | 1 | 100% | 2017-03-19 | 2017-03-18 | 2017-04-06 | 20d |  |  | 124.69h | 124.69h |
| 10 | 2.1 | 项目引言 | manual | 1d | 2017-03-19 A | 2017-03-19 A |  | 100% |  | 2017-03-19 | 2017-03-19 | 1d |  | 汪晓燕 [10%] | 1.43h | 1.43h |
| 11 | 2.2 | 软件总体目标 | manual | 1d | 2017-03-19 A | 2017-03-19 A | 10 | 100% |  | 2017-03-19 | 2017-03-19 | 1d |  | 汪晓燕 [10%] | 0.8h | 0.8h |
| 12 | 2.3 | 环境需求 | manual | 1d | 2017-03-19 A | 2017-03-19 A | 11 | 100% |  | 2017-03-19 | 2017-03-19 | 1d |  | 汪晓燕 [10%] | 0.8h | 0.8h |
| 13 | 2.4 | 分析框架的请求模块 | manual | 1d | 2017-03-19 A | 2017-03-19 A |  | 100% |  | 2017-03-19 | 2017-03-19 | 1d |  | 刘晔 [25%] | 2h | 2h |
| 14 | 2.5 | 分析框架的响应模块 | manual | 1d | 2017-03-21 A | 2017-03-21 A | 13 | 100% |  | 2017-03-19 | 2017-03-19 | 1d |  | 刘晔 [25%] | 2h | 2h |
| 15 | 2.6 | 分析框架的视图模块 | manual | 1d | 2017-03-19 A | 2017-03-19 A | 14 | 100% |  | 2017-03-19 | 2017-03-19 | 1d |  | 刘晔 [20%] | 1.6h | 1.6h |
| 16 | 2.7 | 请求响应视图部分类图的绘制 | manual | 1d | 2017-03-19 A | 2017-03-19 A | 13, 14, 15 | 100% |  | 2017-03-19 | 2017-03-19 | 1d |  | 刘晔 [10%] | 0.8h | 0.8h |
| 17 | 2.8 | 分析框架的IOC模块 | manual | 1d | 2017-03-19 A | 2017-03-19 A |  | 100% |  | 2017-03-19 | 2017-03-19 | 1d |  | 胡明昊 [50%] | 4h | 4h |
| 18 | 2.9 | IOC模块类图绘制 | manual | 1d | 2017-03-19 A | 2017-03-19 A | 17 | 100% |  | 2017-03-19 | 2017-03-19 | 1d |  | 胡明昊 [10%] | 0.8h | 0.8h |
| 19 | 2.10 | 分析框架的配置模块 | manual | 1d | 2017-03-19 A | 2017-03-19 A |  | 100% |  | 2017-03-19 | 2017-03-19 | 1d |  | 穆鹏飞 [50%] | 4h | 4h |
| 20 | 2.11 | 分析框架的数据库模块 | manual | 1d | 2017-03-20 A | 2017-03-20 A | 19 | 100% |  | 2017-03-20 | 2017-03-20 | 1d |  | 穆鹏飞 [50%] | 4h | 4h |
| 21 | 2.12 | 配置部分类图绘制 | manual | 1d | 2017-03-19 A | 2017-03-19 A | 19 | 100% |  | 2017-03-19 | 2017-03-19 | 1d |  | 穆鹏飞 [10%] | 0.8h | 0.8h |
| 22 | 2.13 | 数据库部分类图绘制 | manual | 1d | 2017-03-20 A | 2017-03-20 A | 20 | 100% |  | 2017-03-20 | 2017-03-20 | 1d |  | 穆鹏飞 [10%] | 0.8h | 0.8h |
| 23 | 2.14 | 请求，响应，视图模块用例图绘制与RUCM编写 | manual | 1d | 2017-03-22 A | 2017-03-22 A |  | 100% |  | 2017-03-22 | 2017-03-22 | 1d | start no earlier than 2017-03-22 | 刘晔 [10%] | 1.28h | 1.28h |
| 24 | 2.15 | IOC部分RUCM编写与用例图绘制 | manual | 1d | 2017-03-20 A | 2017-03-20 A | 18 | 100% |  | 2017-03-20 | 2017-03-20 | 1d |  | 胡明昊 [10%] | 0.8h | 0.8h |
| 25 | 2.16 | 配置部分RUCM编写与用例图绘制 | manual | 1d | 2017-03-19 A | 2017-03-19 A | 21 | 100% |  | 2017-03-19 | 2017-03-19 | 1d |  | 穆鹏飞 [10%] | 0.8h | 0.8h |
| 26 | 2.17 | 数据库部分RUCM编写 | manual | 1d | 2017-03-20 A | 2017-03-20 A | 22 | 100% |  | 2017-03-20 | 2017-03-20 | 1d |  | 汪晓燕 [10%] | 1.28h | 1.28h |
| 27 | 2.18 | 数据库与配置部分功能需求 | manual | 1d | 2017-03-21 A | 2017-03-21 A | 25, 26 | 100% |  | 2017-03-21 | 2017-03-21 | 1d |  | 穆鹏飞 [15%] | 1.2h | 1.2h |
| 28 | 2.19 | IOC部分功能需求 | manual | 1d | 2017-03-20 A | 2017-03-20 A | 24 | 100% |  | 2017-03-20 | 2017-03-20 | 1d |  | 胡明昊 [15%] | 1.2h | 1.2h |
| 29 | 2.20 | 请求，响应部分功能需求 | manual | 1d | 2017-03-22 A | 2017-03-22 A | 23 | 100% |  | 2017-03-22 | 2017-03-22 | 1d |  | 刘晔 [15%] | 1.2h | 1.2h |
| 30 | 2.21 | 文档汇总 | manual | 1d | 2017-03-22 A | 2017-03-22 A | 10, 11, 12, 16, 18, 21, 22, 23, 24, 25, 26, 27, 28, 29, 41, 43, 48, 49, 73, 75, 80, 81 | 100% |  | 2017-03-22 | 2017-03-22 | 1d |  | 穆鹏飞 [25%] | 2h | 2h |
| 31 | 2.22 | 文档审阅 | manual | 1d | 2017-03-22 A | 2017-03-22 A | 30 | 100% |  | 2017-03-22 | 2017-03-22 | 1d |  | 胡明昊 [10%] | 0.8h | 0.8h |
| 32 | 2.23 | 排版 | manual | 1d | 2017-03-23 A | 2017-03-23 A | 31 | 100% |  | 2017-03-23 | 2017-03-23 | 1d |  | 胡明昊 [15%] | 1.2h | 1.2h |
| 33 | 2.24 | PPT制作 | manual | 1d | 2017-03-24 A | 2017-03-24 A | 31 | 100% |  | 2017-03-24 | 2017-03-24 | 1d |  | 胡明昊 [25%] | 2h | 2h |
| 34 | 2.25 | 修改项目引言部分 | manual | 1d | 2017-03-25 A | 2017-03-25 A |  | 100% |  | 2017-03-25 | 2017-03-25 | 1d |  | 汪晓燕 [15%] | 1.2h | 1.2h |
| 35 | 2.26 | 修改软件总体概述部分 | manual | 1d | 2017-03-25 A | 2017-03-25 A |  | 100% |  | 2017-03-25 | 2017-03-25 | 1d |  | 汪晓燕 [15%] | 1.2h | 1.2h |
| 36 | 2.27 | 修改环境需求部分 | manual | 1d | 2017-03-25 A | 2017-03-25 A |  | 100% |  | 2017-03-25 | 2017-03-25 | 1d |  | 汪晓燕 [15%] | 1.2h | 1.2h |
| 37 | 2.28 | 详细需求部分文档撰写 | manual | 1d | 2017-03-26 A | 2017-03-26 A |  | 100% |  | 2017-03-26 | 2017-03-26 | 1d |  | 汪晓燕 [15%] | 1.2h | 1.2h |
| 38 | 2.29 | 重新分析框架的请求模块 | manual | 1d | 2017-03-25 A | 2017-03-25 A |  | 100% |  | 2017-03-25 | 2017-03-25 | 1d |  | 刘晔 [15%] | 1.2h | 1.2h |
| 39 | 2.30 | 重新分析框架的响应模块 | manual | 1d | 2017-03-25 A | 2017-03-25 A |  | 100% |  | 2017-03-25 | 2017-03-25 | 1d |  | 刘晔 [15%] | 1.2h | 1.2h |
| 40 | 2.31 | 重新分析框架的视图模块 | manual | 1d | 2017-03-25 A | 2017-03-25 A |  | 100% |  | 2017-03-25 | 2017-03-25 | 1d |  | 刘晔 [15%] | 1.2h | 1.2h |
| 41 | 2.32 | 请求响应视图部分类图的抽象 | manual | 1d | 2017-03-25 A | 2017-03-25 A | 38, 39, 40 | 100% |  | 2017-03-25 | 2017-03-25 | 1d |  | 刘晔 [15%] | 1.2h | 1.2h |
| 42 | 2.33 | 重新分析框架的IOC模块 | manual | 1d | 2017-03-25 A | 2017-03-25 A |  | 100% |  | 2017-03-25 | 2017-03-25 | 1d |  | 胡明昊 [25%] | 2h | 2h |
| 43 | 2.34 | IOC模块类图抽象 | manual | 1d | 2017-03-26 A | 2017-03-26 A | 42 | 100% |  | 2017-03-25 | 2017-03-25 | 1d |  | 胡明昊 [15%] | 1.2h | 1.2h |
| 44 | 2.35 | 分析框架的拦截器模块 | manual | 1d | 2017-03-26 A | 2017-03-26 A |  | 100% |  | 2017-03-26 | 2017-03-26 | 1d |  | 胡明昊 [25%] | 2h | 2h |
| 45 | 2.36 | 拦截器模块类图绘制 | manual | 1d | 2017-03-27 A | 2017-03-27 A | 44 | 100% |  | 2017-03-26 | 2017-03-26 | 1d |  | 胡明昊 [25%] | 2h | 2h |
| 46 | 2.37 | 重新分析框架的配置模块 | manual | 1d | 2017-03-25 A | 2017-03-25 A |  | 100% |  | 2017-03-25 | 2017-03-25 | 1d |  | 穆鹏飞 [15%] | 1.2h | 1.2h |
| 47 | 2.38 | 重新分析框架的数据库模块 | manual | 1d | 2017-03-25 A | 2017-03-25 A |  | 100% |  | 2017-03-25 | 2017-03-25 | 1d |  | 穆鹏飞 [25%] | 2h | 2h |
| 48 | 2.39 | 配置部分类图抽象 | manual | 1d | 2017-03-25 A | 2017-03-25 A | 46 | 100% |  | 2017-03-25 | 2017-03-25 | 1d |  | 穆鹏飞 [20%] | 1.6h | 1.6h |
| 49 | 2.40 | 数据库部分类图抽象 | manual | 1d | 2017-03-27 A | 2017-03-27 A | 47 | 100% |  | 2017-03-26 | 2017-03-26 | 1d |  | 穆鹏飞 [15%] | 1.2h | 1.2h |
| 50 | 2.41 | 请求，响应，视图模块用例图绘制与RUCM重新编写 | manual | 1d | 2017-03-25 A | 2017-03-25 A | 41 | 100% |  | 2017-03-25 | 2017-03-25 | 1d |  | 刘晔 [15%] | 1.2h | 1.2h |
| 51 | 2.42 | IOC部分RUCM编写与用例图绘制 | manual | 1d | 2017-03-25 A | 2017-03-25 A | 43 | 100% |  | 2017-03-25 | 2017-03-25 | 1d |  | 胡明昊 [15%] | 1.2h | 1.2h |
| 52 | 2.43 | 拦截器部分RUCM编写与用例图绘制 | manual | 1d | 2017-03-26 A | 2017-03-26 A | 44 | 100% |  | 2017-03-26 | 2017-03-26 | 1d |  | 胡明昊 [15%] | 1.2h | 1.2h |
| 53 | 2.44 | 数据库部分RUCM编写 | manual | 1d | 2017-03-25 A | 2017-03-25 A | 49 | 100% |  | 2017-03-25 | 2017-03-25 | 1d |  | 汪晓燕 [15%] | 1.2h | 1.2h |
| 54 | 2.45 | 配置部分RUCM编写与用例图绘制 | manual | 1d | 2017-03-25 A | 2017-03-25 A | 48 | 100% |  | 2017-03-25 | 2017-03-25 | 1d |  | 穆鹏飞 [15%] | 1.2h | 1.2h |
| 55 | 2.46 | 请求响应部分时序图绘制 | manual | 1d | 2017-03-27 A | 2017-03-27 A | 41, 50 | 100% |  | 2017-03-27 | 2017-03-27 | 1d |  | 刘晔 [15%] | 1.2h | 1.2h |
| 56 | 2.47 | 请求响应部分状态图绘制 | manual | 1d | 2017-03-27 A | 2017-03-27 A | 41, 50 | 100% |  | 2017-03-27 | 2017-03-27 | 1d |  | 刘晔 [15%] | 1.2h | 1.2h |
| 57 | 2.48 | IOC部分时序图绘制 | manual | 1d | 2017-03-27 A | 2017-03-27 A | 43, 51 | 100% |  | 2017-03-27 | 2017-03-27 | 1d |  | 胡明昊 [15%] | 1.2h | 1.2h |
| 58 | 2.49 | IOC部分状态图绘制 | manual | 1d | 2017-03-27 A | 2017-03-27 A | 43, 51 | 100% |  | 2017-03-27 | 2017-03-27 | 1d |  | 胡明昊 [15%] | 1.2h | 1.2h |
| 59 | 2.50 | 拦截器部分时序图绘制 | manual | 1d | 2017-03-28 A | 2017-03-28 A | 45, 52 | 100% |  | 2017-03-28 | 2017-03-28 | 1d |  | 胡明昊 [15%] | 1.2h | 1.2h |
| 60 | 2.51 | 拦截器部分状态图绘制 | manual | 1d | 2017-03-26 A | 2017-03-26 A | 45, 52 | 100% |  | 2017-03-26 | 2017-03-26 | 1d |  | 胡明昊 [15%] | 1.2h | 1.2h |
| 61 | 2.52 | 数据库部分时序图绘制 | manual | 1d | 2017-03-25 A | 2017-03-25 A | 49, 53 | 100% |  | 2017-03-25 | 2017-03-25 | 1d |  | 穆鹏飞 [15%] | 1.2h | 1.2h |
| 62 | 2.53 | 数据库部分状态图绘制 | manual | 1d | 2017-03-27 A | 2017-03-27 A | 49, 53 | 100% |  | 2017-03-27 | 2017-03-27 | 1d |  | 穆鹏飞 [15%] | 1.2h | 1.2h |
| 63 | 2.54 | 配置部分时序图绘制 | manual | 1d | 2017-03-28 A | 2017-03-28 A | 48, 54 | 100% |  | 2017-03-28 | 2017-03-28 | 1d |  | 穆鹏飞 [15%] | 1.2h | 1.2h |
| 64 | 2.55 | 配置部分状态图绘制 | manual | 1d | 2017-03-28 A | 2017-03-28 A | 48, 54 | 100% |  | 2017-03-28 | 2017-03-28 | 1d |  | 穆鹏飞 [15%] | 1.2h | 1.2h |
| 65 | 2.56 | 文档汇总及审阅 | manual | 1d | 2017-03-29 A | 2017-03-29 A |  | 100% |  | 2017-03-29 | 2017-03-29 | 1d |  | 穆鹏飞 [25%] | 2h | 2h |
| 66 | 2.57 | 文档排版 | manual | 1d | 2017-03-29 A | 2017-03-29 A | 65 | 100% |  | 2017-03-29 | 2017-03-29 | 1d |  | 胡明昊 [15%] | 1.2h | 1.2h |
| 67 | 2.58 | PPT制作 | manual | 1d | 2017-03-30 A | 2017-03-30 A |  | 100% |  | 2017-03-30 | 2017-03-30 | 1d |  | 胡明昊 [50%] | 4h | 4h |
| 68 | 2.59 | 修改文档中出现的问题 | manual | 1d | 2017-04-01 A | 2017-04-01 A |  | 100% |  | 2017-04-01 | 2017-04-01 | 1d |  | 汪晓燕 [15%] | 2.9h | 2.9h |
| 69 | 2.60 | 会议记录整理 | manual | 1d | 2017-04-01 A | 2017-04-01 A |  | 100% |  | 2017-04-01 | 2017-04-01 | 1d |  | 汪晓燕 [15%] | 1.2h | 1.2h |
| 70 | 2.61 | 重新分析框架的请求模块 | manual | 1d | 2017-04-05 A | 2017-04-05 A |  | 100% |  | 2017-04-05 | 2017-04-05 | 1d |  | 刘晔 [10%] | 0.8h | 0.8h |

| ID | WBS | Task | Type | Duration | Start | Finish | Predecessors | Complete | Baseline start | Baseline finish | Baseline duration | Resources | Work | Actual work |
| --- | --- | --- | --- | --- | --- | --- | --- | --- | --- | --- | --- | --- | --- | --- |
| 71 | 2.62 | 重新分析框架的响应模块 | manual | 1d | 2017-04-05 A | 2017-04-05 A |  | 100% | 2017-04-05 | 2017-04-05 | 1d | 刘晔 [10%] | 1.25h | 1.25h |
| 72 | 2.63 | 重新分析框架的视图模块 | manual | 1d | 2017-04-05 A | 2017-04-05 A |  | 100% | 2017-04-05 | 2017-04-05 | 1d | 刘晔 [10%] | 1.25h | 1.25h |
| 73 | 2.64 | 请求响应视图部分类图的抽象 | manual | 1d | 2017-04-05 A | 2017-04-05 A | 70, 71, 72 | 100% | 2017-04-05 | 2017-04-05 | 1d | 刘晔 [10%] | 1.7h | 1.7h |
| 74 | 2.65 | 重新分析框架的IOC模块 | manual | 1d | 2017-04-05 A | 2017-04-05 A |  | 100% | 2017-04-05 | 2017-04-05 | 1d | 胡明昊 [15%] | 1.2h | 1.2h |
| 75 | 2.66 | IOC模块类图抽象 | manual | 1d | 2017-04-05 A | 2017-04-05 A | 74 | 100% | 2017-04-05 | 2017-04-05 | 1d | 胡明昊 [15%] | 1.2h | 1.2h |
| 76 | 2.67 | 分析框架的拦截器模块 | manual | 1d | 2017-04-01 A | 2017-04-01 A |  | 100% | 2017-04-01 | 2017-04-01 | 1d | 胡明昊 [15%] | 1.2h | 1.2h |
| 77 | 2.68 | 拦截器模块类图重新绘制 | manual | 1d | 2017-04-01 A | 2017-04-01 A | 76 | 100% | 2017-04-01 | 2017-04-01 | 1d | 胡明昊 [15%] | 1.2h | 1.2h |
| 78 | 2.69 | 重新分析框架的配置模块 | manual | 1d | 2017-04-02 A | 2017-04-02 A |  | 100% | 2017-04-02 | 2017-04-02 | 1d | 穆鹏飞 [15%] | 1.2h | 1.2h |
| 79 | 2.70 | 重新分析框架的数据库模块 | manual | 1d | 2017-04-02 A | 2017-04-02 A |  | 100% | 2017-04-02 | 2017-04-02 | 1d | 穆鹏飞 [15%] | 1.2h | 1.2h |
| 80 | 2.71 | 配置部分类图抽象 | manual | 1d | 2017-04-02 A | 2017-04-02 A | 78 | 100% | 2017-04-02 | 2017-04-02 | 1d | 穆鹏飞 [15%] | 1.2h | 1.2h |
| 81 | 2.72 | 数据库部分类图抽象 | manual | 1d | 2017-04-02 A | 2017-04-02 A | 79 | 100% | 2017-04-02 | 2017-04-02 | 1d | 穆鹏飞 [15%] | 1.2h | 1.2h |
| 82 | 2.73 | 请求，响应，视图模块用例图绘制与RUCM重新编写 | manual | 1d | 2017-04-05 A | 2017-04-05 A | 73 | 100% | 2017-04-05 | 2017-04-05 | 1d | 刘晔 [10%] | 0.8h | 0.8h |
| 83 | 2.74 | IOC部分RUCM编写与用例图绘制 | manual | 1d | 2017-04-05 A | 2017-04-05 A | 75 | 100% | 2017-04-05 | 2017-04-05 | 1d | 胡明昊 [15%] | 1.2h | 1.2h |
| 84 | 2.75 | 拦截器部分RUCM编写与用例图绘制 | manual | 1d | 2017-04-05 A | 2017-04-05 A | 76 | 100% | 2017-04-05 | 2017-04-05 | 1d | 胡明昊 [15%] | 1.2h | 1.2h |
| 85 | 2.76 | 数据库部分RUCM编写 | manual | 1d | 2017-04-04 A | 2017-04-04 A | 81 | 100% | 2017-04-04 | 2017-04-04 | 1d | 汪晓燕 [15%] | 1.2h | 1.2h |
| 86 | 2.77 | 配置部分RUCM编写与用例图绘制 | manual | 1d | 2017-04-02 A | 2017-04-02 A | 80 | 100% | 2017-04-02 | 2017-04-02 | 1d | 穆鹏飞 [15%] | 1.2h | 1.2h |
| 87 | 2.78 | 请求响应部分时序图绘制与说明撰写 | manual | 1d | 2017-04-05 A | 2017-04-05 A | 82 | 100% | 2017-04-05 | 2017-04-05 | 1d | 刘晔 [15%] | 1.2h | 1.2h |
| 88 | 2.79 | IOC部分时序图绘制与说明撰写 | manual | 1d | 2017-04-05 A | 2017-04-05 A | 75, 83 | 100% | 2017-04-05 | 2017-04-05 | 1d | 胡明昊 [15%] | 1.2h | 1.2h |
| 89 | 2.80 | 拦截器部分时序图绘制与说明撰写 | manual | 1d | 2017-04-05 A | 2017-04-05 A | 77, 84 | 100% | 2017-04-05 | 2017-04-05 | 1d | 胡明昊 [15%] | 1.2h | 1.2h |
| 90 | 2.81 | 数据库部分时序图绘制与说明撰写 | manual | 1d | 2017-04-05 A | 2017-04-05 A | 81, 85 | 100% | 2017-04-05 | 2017-04-05 | 1d | 穆鹏飞 [15%] | 1.2h | 1.2h |
| 91 | 2.82 | 数据库部分状态图绘制与说明撰写 | manual | 1d | 2017-04-05 A | 2017-04-05 A | 81, 85 | 100% | 2017-04-05 | 2017-04-05 | 1d | 穆鹏飞 [15%] | 1.2h | 1.2h |
| 92 | 2.83 | 配置部分时序图绘制与说明撰写 | manual | 1d | 2017-04-05 A | 2017-04-05 A | 80, 86 | 100% | 2017-04-05 | 2017-04-05 | 1d | 穆鹏飞 [15%] | 1.2h | 1.2h |
| 93 | 2.84 | Blade框架状态图绘制与说明撰写 | manual | 1d | 2017-04-05 A | 2017-04-05 A | 80, 86 | 100% | 2017-04-05 | 2017-04-05 | 1d | 穆鹏飞 [15%] | 1.2h | 1.2h |
| 94 | 2.85 | 文档汇总及审阅 | manual | 1d | 2017-04-05 A | 2017-04-05 A |  | 100% | 2017-04-05 | 2017-04-05 | 1d | 穆鹏飞 [15%] | 1.2h | 1.2h |
| 95 | 2.86 | 文档排版 | manual | 1d | 2017-04-05 A | 2017-04-05 A | 94 | 100% | 2017-04-05 | 2017-04-05 | 1d | 胡明昊 [15%] | 1.2h | 1.2h |
| 96 | 2.87 | PPT制作 | manual | 1d | 2017-04-06 A | 2017-04-06 A |  | 100% | 2017-04-06 | 2017-04-06 | 1d | 穆鹏飞 [50%] | 4h | 4h |

| ID | WBS | Task | Type | Duration | Start | Finish | Predecessors | Complete | Actual start | Actual finish | Baseline start | Baseline finish | Baseline duration | Resources | Work | Actual work |
| --- | --- | --- | --- | --- | --- | --- | --- | --- | --- | --- | --- | --- | --- | --- | --- | --- |
| 97 | 3 | **软件需求评审** |  | 8d | 2017-04-07 | 2017-04-14 A | 9 | 100% | 2017-04-03 |  | 2017-04-07 | 2017-04-14 | 8d |  | 20h | 20h |
| 98 | 3.1 | 评审模板设计 | manual | 1d | 2017-04-03 A | 2017-04-03 A |  | 100% |  |  | 2017-04-03 | 2017-04-03 | 1d | 汪晓燕 [15%] | 1.2h | 1.2h |
| 99 | 3.2 | 评审整理 | manual | 1d | 2017-04-03 A | 2017-04-03 A |  | 100% |  |  | 2017-04-03 | 2017-04-03 | 1d | 汪晓燕 [15%] | 1.2h | 1.2h |
| 100 | 3.3 | 软件评审 | manual | 1d | 2017-04-06 A | 2017-04-06 A |  | 100% |  |  | 2017-04-06 | 2017-04-06 | 1d | 胡明昊 [20%] | 1.6h | 1.6h |
| 101 | 3.4 | 软件评审 | manual | 1d | 2017-04-06 A | 2017-04-06 A |  | 100% |  |  | 2017-04-06 | 2017-04-06 | 1d | 刘晔 [20%] | 1.6h | 1.6h |
| 102 | 3.5 | 软件评审 | manual | 1d | 2017-04-06 A | 2017-04-06 A |  | 100% |  |  | 2017-04-06 | 2017-04-06 | 1d | 穆鹏飞 [20%] | 1.6h | 1.6h |
| 103 | 3.6 | 软件评审 | manual | 1d | 2017-04-06 A | 2017-04-06 A |  | 100% |  |  | 2017-04-06 | 2017-04-06 | 1d | 汪晓燕 [20%] | 1.6h | 1.6h |
| 104 | 3.7 | 出现问题整理 | manual | 1d | 2017-04-10 A | 2017-04-10 A |  | 100% |  |  | 2017-04-10 | 2017-04-10 | 1d | 汪晓燕 [15%] | 1.2h | 1.2h |
| 105 | 3.8 | 修改文档格式问题 | manual | 1d | 2017-04-13 A | 2017-04-13 A |  | 100% |  |  | 2017-04-13 | 2017-04-13 | 1d | 穆鹏飞 [15%] | 1.2h | 1.2h |
| 106 | 3.9 | 修改C组提出的问题 | manual | 1d | 2017-04-13 A | 2017-04-13 A |  | 100% |  |  | 2017-04-13 | 2017-04-13 | 1d | 刘晔 [15%] | 1.2h | 1.2h |
| 107 | 3.10 | 修改D组提出的问题 | manual | 1d | 2017-04-13 A | 2017-04-13 A |  | 100% |  |  | 2017-04-13 | 2017-04-13 | 1d | 汪晓燕 [15%] | 1.2h | 1.2h |
| 108 | 3.11 | 业务需求 | manual | 1d | 2017-04-11 A | 2017-04-11 A |  | 100% |  |  | 2017-04-11 | 2017-04-11 | 1d | 胡明昊 [15%] | 1.2h | 1.2h |
| 109 | 3.12 | 排版 | manual | 1d | 2017-04-14 A | 2017-04-14 A |  | 100% |  |  | 2017-04-14 | 2017-04-14 | 1d | 胡明昊 [15%] | 1.2h | 1.2h |
| 110 | 3.13 | PPT | manual | 1d | 2017-04-14 A | 2017-04-14 A |  | 100% |  |  | 2017-04-14 | 2017-04-14 | 1d | 穆鹏飞 [50%] | 4h | 4h |
| 111 | 4 | **软件需求复评审** |  | 8d | 2017-04-15 | 2017-04-22 | 97 | 100% | 2017-04-19 | 2017-04-20 | 2017-04-15 | 2017-04-22 | 8d |  | 5.44h | 5.44h |
| 112 | 4.1 | 对A和G组评价 | manual | 1d | 2017-04-19 A | 2017-04-19 A |  | 100% |  |  | 2017-04-19 | 2017-04-19 | 1d | 胡明昊 [21%]; 刘晔 [10%]; 穆鹏飞 [15%]; 汪晓燕 [12%] | 4.64h | 4.64h |
| 113 | 4.2 | 对别的组评价整理 | manual | 1d | 2017-04-20 A | 2017-04-20 A |  | 100% |  |  | 2017-04-20 | 2017-04-20 | 1d | 汪晓燕 [10%] | 0.8h | 0.8h |
| 114 | 5 | **软件产品改进与展示** |  | 21d | 2017-04-22 A | 2017-05-12 A | 111 | 100% |  |  | 2017-04-22 | 2017-05-12 | 21d |  | 79.63h | 79.63h |
| 115 | 5.1 | **第一次软件产品改进** |  | 7d | 2017-04-22 A | 2017-04-28 A |  | 100% |  |  | 2017-04-22 | 2017-04-28 | 7d |  | 32.59h | 32.59h |
| 116 | 5.1.1 | 会议记录总结 | manual | 1d | 2017-04-22 A | 2017-04-22 A |  | 100% |  |  | 2017-04-22 | 2017-04-22 | 1d | 刘晔 [10%] | 8h | 8h |
| 117 | 5.1.2 | 需求改进 | manual | 1d | 2017-04-23 A | 2017-04-23 A | 116 | 100% |  |  | 2017-04-23 | 2017-04-23 | 1d | 胡明昊 [26.5%]; 刘晔 [39.3%]; 穆鹏飞 [12%]; 汪晓燕 [13.6%] | 7.31h | 7.31h |
| 118 | 5.1.3 | 对A组和G组评价 |  | 1d | 2017-04-25 A | 2017-04-25 A |  | 100% |  |  | 2017-04-25 | 2017-04-25 | 1d | 胡明昊 [22%]; 刘晔 [20%]; 穆鹏飞 [32%]; 汪晓燕 [20%] | 7.52h | 7.52h |
| 119 | 5.1.4 | 编写使用手册 | manual | 1d | 2017-04-27 A | 2017-04-27 A |  | 100% |  |  | 2017-04-27 | 2017-04-27 | 1d | 胡明昊 [12%] | 0.96h | 0.96h |
| 120 | 5.1.5 | 排版 | manual | 1d | 2017-04-28 A | 2017-04-28 A | 117 | 100% |  |  | 2017-04-28 | 2017-04-28 | 1d | 胡明昊 [7%] | 0.8h | 0.8h |
| 121 | 5.1.6 | PPT制作 | manual | 1d | 2017-04-28 A | 2017-04-28 A |  | 100% |  |  | 2017-04-28 | 2017-04-28 | 1d | 胡明昊 [3%] | 8h | 8h |

| ID | WBS | Task | Type | Duration | Start | Finish | Predecessors | Complete | Actual start | Actual finish | Baseline start | Baseline finish | Baseline duration | Resources | Work | Actual work |
| --- | --- | --- | --- | --- | --- | --- | --- | --- | --- | --- | --- | --- | --- | --- | --- | --- |
| 122 | 5.2 | **第二次软件产品改进** |  | 7d | 2017-04-29 A | 2017-05-05 A |  | 100% |  |  | 2017-04-29 | 2017-04-29 | 1d? |  | 25.28h | 25.28h |
| 123 | 5.2.1 | 会议记录总结 | manual | 1d | 2017-04-30 A | 2017-04-30 A |  | 100% |  |  | 2017-04-29 | 2017-04-29 | 1d | 刘晔 [10%] | 0.8h | 0.8h |
| 124 | 5.2.2 | 软件评审总结 | manual | 1d | 2017-05-03 A | 2017-05-03 A |  | 100% |  |  | 2017-05-02 | 2017-05-02 | 1d | 汪晓燕 [7%] | 0.56h | 0.56h |
| 125 | 5.2.3 | 软件需求规格说明书修改说明简表 | manual | 1d | 2017-05-03 A | 2017-05-03 A |  | 100% |  |  | 2017-05-02 | 2017-05-02 | 1d | 穆鹏飞 [8%] | 0.64h | 0.64h |
| 126 | 5.2.4 | 类图时序用例对应表 | manual | 1d | 2017-05-03 A | 2017-05-03 A |  | 100% |  |  | 2017-05-02 | 2017-05-02 | 1d | 穆鹏飞 [8%] | 0.64h | 0.64h |
| 127 | 5.2.5 | 需求说明书修改 | manual | 1d | 2017-05-03 A | 2017-05-03 A |  | 100% |  |  | 2017-05-03 | 2017-05-03 | 1d | 胡明昊 [3%]; 刘晔 [17%]; 穆鹏飞 [20%]; 汪晓燕 [12%] | 4.16h | 4.16h |
| 128 | 5.2.6 | 学习Blade Ioc初始化方式 | manual | 1d | 2017-04-29 A | 2017-04-29 A |  | 100% |  |  | 2017-04-29 | 2017-04-29 | 1d | 胡明昊 [45%] | 3.6h | 3.6h |
| 129 | 5.2.7 | 实现bladetest | manual | 1d | 2017-05-02 A | 2017-05-02 A |  | 100% |  |  | 2017-04-30 | 2017-04-30 | 1d | 胡明昊 [56%] | 4.48h | 4.48h |
| 130 | 5.2.8 | 添加需求改进文档 | manual | 1d | 2017-05-03 A | 2017-05-03 A |  | 100% |  |  | 2017-05-02 | 2017-05-02 | 1d | 胡明昊 [90%] | 7.2h | 7.2h |
| 131 | 5.2.9 | 排版 | manual | 1d | 2017-05-04 A | 2017-05-04 A |  | 100% |  |  | 2017-05-03 | 2017-05-03 | 1d | 穆鹏飞 [10%] | 0.8h | 0.8h |
| 132 | 5.2.10 | PPT制作 | manual | 1d | 2017-05-05 A | 2017-05-05 A |  | 100% |  |  | 2017-05-04 | 2017-05-04 | 1d | 穆鹏飞 [30%] | 2.4h | 2.4h |
| 133 | 5.3 | **第三次软件产品改进** |  | 1d | 2017-05-07 | 2017-05-07 |  | 100% | 2017-05-06 | 2017-05-12 | 2017-05-06 | 2017-05-12 | 7d |  | 21.76h | 21.76h |
| 134 | 5.3.1 | 会议记录总结 | manual | 1d | 2017-05-06 A | 2017-05-06 A |  | 100% |  |  | 2017-05-06 | 2017-05-06 | 1d | 汪晓燕 [10%] | 0.8h | 0.8h |
| 135 | 5.3.2 | 软件改进 | manual | 1d | 2017-05-09 A | 2017-05-09 A |  | 100% |  |  | 2017-05-09 | 2017-05-09 | 1d | 胡明昊 [73%] | 5.84h | 5.84h |
| 136 | 5.3.3 | 改进部分需求说明书撰写 | manual | 1d | 2017-05-10 A | 2017-05-10 A |  | 100% |  |  | 2017-05-10 | 2017-05-10 | 1d | 胡明昊 [10%]; 刘晔 [24%]; 穆鹏飞 [90%]; 汪晓燕 [20%] | 10.72h | 10.72h |
| 137 | 5.3.4 | 排版 | manual | 1d | 2017-05-11 A | 2017-05-11 A |  | 100% |  |  | 2017-05-10 | 2017-05-10 | 1d | 胡明昊 [10%] | 0.8h | 0.8h |
| 138 | 5.3.5 | 测试用例撰写 | manual | 1d | 2017-05-12 A | 2017-05-12 A |  | 100% |  |  | 2017-05-10 | 2017-05-10 | 1d | 刘晔 [20%] | 1.6h | 1.6h |
| 139 | 5.3.6 | PPT制作 | manual | 1d | 2017-05-12 A | 2017-05-12 A |  | 100% |  |  | 2017-05-12 | 2017-05-12 | 1d | 胡明昊 [25%] | 2h | 2h |
| 140 | 6 | **软件测试分析** |  | 6d | 2017-05-13 A | 2017-05-18 A | 114 | 100% |  |  | 2017-05-13 | 2017-05-19 | 7d |  | 19.6h | 19.6h |
| 141 | 6.1 | 会议记录总结 | manual | 1d | 2017-05-13 A | 2017-05-13 A |  | 100% |  |  | 2017-05-13 | 2017-05-13 | 1d | 汪晓燕 [15%] | 1.2h | 1.2h |
| 142 | 6.2 | 测试用例撰写 | manual | 1d | 2017-05-17 A | 2017-05-17 A |  | 100% |  |  | 2017-05-13 | 2017-05-13 | 1d | 刘晔 [67%]; 胡明昊 [20%]; 穆鹏飞 [20%] | 8.56h | 8.56h |
| 143 | 6.3 | 排版 | manual | 1d | 2017-05-18 A | 2017-05-18 A |  | 100% |  |  | 2017-05-16 | 2017-05-16 | 1d | 胡明昊 [58%] | 4.64h | 4.64h |
| 144 | 6.4 | 整理评审 | manual | 1d | 2017-05-18 A | 2017-05-18 A |  | 100% |  |  | 2017-05-18 | 2017-05-18 | 1d | 汪晓燕 [15%] | 1.2h | 1.2h |
| 145 | 6.5 | PPT制作 | manual | 1d | 2017-05-18 A | 2017-05-18 A |  | 100% |  |  | 2017-05-19 | 2017-05-19 | 1d | 穆鹏飞 [50%] | 4h | 4h |

| ID | WBS | Task | Type | Duration | Start | Finish | Predecessors | Complete | Remaining | Baseline start | Baseline finish | Baseline duration | Total slack | Resources | Work | Actual work |
| --- | --- | --- | --- | --- | --- | --- | --- | --- | --- | --- | --- | --- | --- | --- | --- | --- |
| 146 | 7 | **软件测试评审** |  | 6d | 2017-05-20 A | 2017-05-25 A | 140 | 100% |  | 2017-05-20 | 2017-05-26 | 7d |  |  | 50.88h | 50.88h |
| 147 | 7.1 | 会议记录整理 | manual | 1d | 2017-05-20 A | 2017-05-20 A |  | 100% |  | 2017-05-20 | 2017-05-20 | 1d |  | 汪晓燕 [10%] | 0.8h | 0.8h |
| 148 | 7.2 | 测试文档修改 | manual | 1d | 2017-05-23 A | 2017-05-23 A |  | 100% |  | 2017-05-22 | 2017-05-22 | 1d |  | 胡明昊 [30%]; 刘晔 [40%]; 穆鹏飞 [30%]; 汪晓燕 [43%] | 11.44h | 11.44h |
| 149 | 7.3 | 具体测试 | manual | 2d | 2017-05-23 A | 2017-05-24 A |  | 100% |  | 2017-05-22 | 2017-05-23 | 2d |  | 胡明昊 [50%]; 刘晔 [50%]; 穆鹏飞 [90%]; 汪晓燕 [10%] | 32h | 32h |
| 150 | 7.4 | 排版 | manual | 1d | 2017-05-25 A | 2017-05-25 A | 148 | 100% |  | 2017-05-23 | 2017-05-23 | 1d |  | 胡明昊 [10%] | 0.8h | 0.8h |
| 151 | 7.5 | 对A与G组评审 | manual | 1d | 2017-05-24 A | 2017-05-24 A |  | 100% |  | 2017-05-25 | 2017-05-25 | 1d |  | 胡明昊 [5%]; 刘晔 [10%]; 穆鹏飞 [10%]; 汪晓燕 [10%] | 2.8h | 2.8h |
| 152 | 7.6 | 整理评审 | manual | 1d | 2017-05-25 A | 2017-05-25 A |  | 100% |  | 2017-05-25 | 2017-05-25 | 1d |  | 汪晓燕 [8%] | 0.64h | 0.64h |
| 153 | 7.7 | PPT制作 | manual | 1d | 2017-05-25 A | 2017-05-25 A |  | 100% |  | 2017-05-26 | 2017-05-26 | 1d |  | 穆鹏飞 [30%] | 2.4h | 2.4h |
| 154 | 8 | **软件测试复评审** |  | 1d? | 2017-03-14 | 2017-03-14 | 146 |  |  | 2017-05-27 | 2017-06-02 | 7d | 0d |  | 8h |  |
| 155 | 8.1 | 会议记录整理 | milestone, manual | 0d | 2017-03-14 | 2017-03-14 |  |  |  | 2017-05-27 | 2017-05-27 | 1d |  | 刘晔 |  |  |
| 156 | 8.2 | 测试文档错误修改 | milestone, manual | 0d | 2017-03-14 | 2017-03-14 | 155 |  |  | 2017-05-28 | 2017-05-28 | 1d |  | 胡明昊; 刘晔; 穆鹏飞; 汪晓燕 |  |  |
| 157 | 8.3 | 排版 | manual | 1d | 2017-03-14 | 2017-03-14 | 156 |  |  | 2017-05-29 | 2017-05-29 | 1d |  | 胡明昊 | 8h |  |
| 158 | 8.4 | 对A组评审 | milestone, manual | 0d? | 2017-03-14 | 2017-03-14 |  |  |  | 2017-06-01 | 2017-06-01 | 1d |  | 胡明昊; 刘晔; 穆鹏飞; 汪晓燕 |  |  |
| 159 | 8.5 | 对G组评审 | milestone, manual | 0d? | 2017-03-14 | 2017-03-14 |  |  |  | 2017-06-01 | 2017-06-01 | 1d |  | 胡明昊; 刘晔; 穆鹏飞; 汪晓燕 |  |  |
| 160 | 8.6 | 整理评审 | milestone, manual | 0d | 2017-03-14 | 2017-03-14 |  |  |  | 2017-06-01 | 2017-06-01 | 1d |  | 汪晓燕 |  |  |
| 161 | 8.7 | PPT制作 | milestone, manual | 0d | 2017-03-14 | 2017-03-14 |  |  |  | 2017-06-02 | 2017-06-02 | 1d |  | 穆鹏飞 |  |  |
| 162 | 9 | **软件演示与测评** |  | 1d | 2017-03-14 | 2017-03-14 | 114, 154, 1 |  |  | 2017-06-03 | 2017-06-09 | 4d |  |  | 32h |  |
| 163 | 9.1 | 会议记录整理 | milestone, manual | 0d | 2017-03-14 | 2017-03-14 |  |  |  | 2017-06-03 | 2017-06-03 | 1d |  | 刘晔 |  |  |
| 164 | 9.2 | 软件错误修改 | milestone, manual | 0d | 2017-03-14 | 2017-03-14 |  |  |  | 2017-06-04 | 2017-06-04 | 1d |  | 胡明昊; 刘晔; 穆鹏飞; 汪晓燕 |  |  |
| 165 | 9.3 | 软件调试 | milestone, manual | 0d | 2017-03-14 | 2017-03-14 |  |  |  | 2017-06-06 | 2017-06-06 | 1d |  | 胡明昊; 刘晔; 穆鹏飞; 汪晓燕 |  |  |
| 166 | 9.4 | 软件总结文档撰写 | manual | 1d | 2017-04-24 | 2017-04-25 |  |  |  | 2017-06-07 | 2017-06-07 | 1d |  | 胡明昊; 刘晔; 穆鹏飞; 汪晓燕 | 32h |  |
| 167 | 9.5 | PPT制作 | milestone, manual | 0d | 2017-03-14 | 2017-03-14 |  |  |  | 2017-06-09 | 2017-06-09 | 1d |  | 胡明昊 |  |  |
| 168 | 10 | **软件进度计划于控制** |  | 101d | 2017-03-14 A | 2017-06-22 |  | 96% | 4.1d | 2017-03-14 | 2017-06-22 | 101d |  |  | 51.84h | 35.84h |
| 169 | 10.1 | 第一次作业计划 | manual | 7d | 2017-03-15 A | 2017-03-21 A |  | 100% |  | 2017-03-15 | 2017-03-21 | 7d |  | 穆鹏飞 [2%] | 1.12h | 1.12h |
| 170 | 10.2 | 第二次作业计划 | manual | 7d | 2017-03-18 A | 2017-03-24 A |  | 100% |  | 2017-03-18 | 2017-03-24 | 7d |  | 穆鹏飞 [2%] | 1.12h | 1.12h |
| 171 | 10.3 | 第三次作业计划 | manual | 7d | 2017-03-25 A | 2017-03-31 A |  | 100% |  | 2017-03-25 | 2017-03-31 | 7d |  | 穆鹏飞 [2%] | 1.12h | 1.12h |
| 172 | 10.4 | 第四次作业计划 | manual | 7d | 2017-04-01 A | 2017-04-07 A |  | 100% |  | 2017-04-01 | 2017-04-07 | 7d |  | 穆鹏飞 [2%] | 1.12h | 1.12h |
| 173 | 10.5 | 第五次作业计划 | manual | 7d | 2017-04-08 A | 2017-04-14 A |  | 100% |  | 2017-04-08 | 2017-04-14 | 7d |  | 穆鹏飞 [2%] | 1.12h | 1.12h |
| 174 | 10.6 | 第六次作业计划 | manual | 7d | 2017-04-15 A | 2017-04-21 A |  | 100% |  | 2017-04-15 | 2017-04-21 | 7d |  | 穆鹏飞 [15%] | 8.4h | 8.4h |

| ID | WBS | Task | Type | Duration | Start | Finish | Complete | Remaining | Actual start | Actual finish | Baseline start | Baseline finish | Baseline duration | Resources | Work | Actual work |
| --- | --- | --- | --- | --- | --- | --- | --- | --- | --- | --- | --- | --- | --- | --- | --- | --- |
| 175 | 10.7 | **软件产品改进与展示project计划** |  | 20d | 2017-04-23 A | 2017-05-12 A | 100% |  |  |  | 2017-04-23 | 2017-04-24 | 3d |  | 17.44h | 17.44h |
| 176 | 10.7.1 | 第一次project管理 |  | 1.25d | 2017-04-23 A | 2017-04-24 A | 100% |  |  |  | 2017-04-23 | 2017-04-24 | 1d | 穆鹏飞 [75%] | 10h | 10h |
| 177 | 10.7.2 | 第二次project管理 | manual | 1d | 2017-05-05 A | 2017-05-05 A | 100% |  |  |  | 2017-05-05 | 2017-05-05 | 1d | 穆鹏飞 [80%] | 6.4h | 6.4h |
| 178 | 10.7.3 | 第三次project管理 | manual | 1d | 2017-05-12 A | 2017-05-12 A | 100% |  |  |  | 2017-05-12 | 2017-05-12 | 1d | 穆鹏飞 [13%] | 1.04h | 1.04h |
| 179 | 10.8 | 软件测试分析project计划 | manual | 1d | 2017-05-19 A | 2017-05-19 A | 100% |  |  |  | 2017-05-18 | 2017-05-18 | 1d | 穆鹏飞 [30%] | 2.4h | 2.4h |
| 180 | 10.9 | 软件测试评审project计划 | manual | 1d | 2017-05-25 A | 2017-05-25 A | 100% |  |  |  | 2017-05-25 | 2017-05-25 | 1d | 穆鹏飞 [25%] | 2h | 2h |
| 181 | 10.10 | 软件测试复评审project计划 | manual | 1d? | 2017-03-14 | 2017-03-14 |  |  |  |  | 2017-06-01 | 2017-06-01 | 1d | 穆鹏飞 | 8h |  |
| 182 | 10.11 | 软件演示与测评project计划 | manual | 1d? | 2017-03-14 | 2017-03-14 |  |  |  |  | 2017-06-08 | 2017-06-08 | 1d | 穆鹏飞 | 8h |  |
| 183 | 11 | **配置管理** |  | 101d | 2017-03-14 A | 2017-06-22 | 95% | 5.46d |  |  | 2017-03-14 | 2017-06-22 | 101d |  | 36.8h | 20.8h |
| 184 | 11.1 | 第一次配置管理 | manual | 7d | 2017-03-18 A | 2017-03-24 A | 100% |  |  |  | 2017-03-18 | 2017-03-24 | 7d | 胡明昊 [2%] | 1.12h | 1.12h |
| 185 | 11.2 | 第二次配置管理 | manual | 7d | 2017-03-25 A | 2017-03-31 A | 100% |  |  |  | 2017-03-25 | 2017-03-31 | 7d | 胡明昊 [2%] | 1.12h | 1.12h |
| 186 | 11.3 | 第三次配置管理 | manual | 7d | 2017-04-01 A | 2017-04-07 A | 100% |  |  |  | 2017-04-01 | 2017-04-07 | 7d | 胡明昊 [2%] | 1.12h | 1.12h |
| 187 | 11.4 | 第四次配置管理 | manual | 7d | 2017-04-08 A | 2017-04-14 A | 100% |  |  |  | 2017-04-08 | 2017-04-14 | 7d | 胡明昊 [2%] | 1.12h | 1.12h |
| 188 | 11.5 | **第五次配置管理** |  | 7d | 2017-04-15 | 2017-04-21 A | 100% |  | 2017-04-20 |  | 2017-04-15 | 2017-04-21 | 2d |  | 9.6h | 9.6h |
| 189 | 11.5.1 | 设置工作记录网站 | manual | 2d | 2017-04-20 A | 2017-04-21 A | 100% |  |  |  | 2017-04-15 | 2017-04-21 | 2d | 胡明昊 [60%] | 9.6h | 9.6h |
| 190 | 11.6 | **软件产品改进与展示配置管理** |  | 1d? | 2017-03-14 | 2017-03-14 | 100% |  | 2017-04-27 | 2017-05-11 | 2017-04-22 | 2017-05-12 | 3d |  | 2.4h | 2.4h |
| 191 | 11.6.1 | 第一次配置管理 | manual | 1d? | 2017-04-27 A | 2017-04-27 A | 100% |  |  |  | 2017-04-27 | 2017-04-27 | 1d | 胡明昊 [10%] | 0.8h | 0.8h |
| 192 | 11.6.2 | 第二次配置管理 | manual | 1d? | 2017-05-04 A | 2017-05-04 A | 100% |  |  |  | 2017-05-04 | 2017-05-04 | 1d | 胡明昊 [10%] | 0.8h | 0.8h |
| 193 | 11.6.3 | 第三次配置管理 | manual | 1d | 2017-05-11 A | 2017-05-11 A | 100% |  |  |  | 2017-05-11 | 2017-05-11 | 1d | 胡明昊 [10%] | 0.8h | 0.8h |
| 194 | 11.7 | 软件测试分析配置管理 | manual | 1d | 2017-05-14 A | 2017-05-14 A | 100% |  |  |  | 2017-05-18 | 2017-05-18 | 1d | 胡明昊 [39%] | 3.12h | 3.12h |
| 195 | 11.8 | 软件测试评审配置管理 | manual | 1d | 2017-05-25 A | 2017-05-25 A | 100% |  |  |  | 2017-05-25 | 2017-05-25 | 1d | 胡明昊 [15%] | 1.2h | 1.2h |
| 196 | 11.9 | 软件测试复评审配置管理 | manual | 1d? | 2017-03-14 | 2017-03-14 |  |  |  |  | 2017-06-01 | 2017-06-01 | 1d | 胡明昊 | 8h |  |
| 197 | 11.10 | 软件演示与测评配置管理 | manual | 1d? | 2017-03-14 | 2017-03-14 |  |  |  |  | 2017-06-08 | 2017-06-08 | 1d | 胡明昊 | 8h |  |
| 198 | 12 | **综合实验分析和总结** |  | 101d | 2017-03-14 A | 2017-06-22 | 83% | 16.83d |  |  | 2017-03-14 | 2017-06-22 | 101d |  | 57.68h | 25.68h |
| 199 | 12.1 | 第一次综合实验分析 | manual | 1d | 2017-03-23 A | 2017-03-23 A | 100% |  |  |  | 2017-03-23 | 2017-03-23 | 1d | 汪晓燕 [25%]; 刘晔 [25%] | 4h | 4h |
| 200 | 12.2 | 第二次综合实验分析 | manual | 1d | 2017-03-30 A | 2017-03-30 A | 100% |  |  |  | 2017-03-30 | 2017-03-30 | 1d | 汪晓燕 [25%]; 刘晔 [25%] | 4h | 4h |
| 201 | 12.3 | 第三次综合实验分析 | manual | 1d | 2017-04-06 A | 2017-04-06 A | 100% |  |  |  | 2017-04-06 | 2017-04-06 | 1d | 汪晓燕 [25%]; 刘晔 [25%] | 4h | 4h |
| 202 | 12.4 | 第四次综合实验分析 | manual | 1d | 2017-04-13 A | 2017-04-13 A | 100% |  |  |  | 2017-04-13 | 2017-04-13 | 1d | 汪晓燕 [25%]; 刘晔 [25%] | 4h | 4h |
| 203 | 12.5 | 第五次综合实验分析 | manual | 1d | 2017-04-20 A | 2017-04-20 A | 100% |  |  |  | 2017-04-20 | 2017-04-20 | 1d | 汪晓燕 [25%]; 刘晔 [25%] | 4h | 4h |

| ID | WBS | Task | Type | Duration | Start | Finish | Complete | Actual start | Baseline start | Baseline finish | Baseline duration | Resources | Work | Actual work |
| --- | --- | --- | --- | --- | --- | --- | --- | --- | --- | --- | --- | --- | --- | --- |
| 204 | 12.6 | **软件产品改进与展示管理分析** |  | 21d | 2017-04-22 | 2017-05-12 A | 100% | 2017-04-27 | 2017-04-22 | 2017-05-12 | 21d |  | 4.08h | 4.08h |
| 205 | 12.6.1 | **第一次管理** |  | 1d | 2017-04-27 A | 2017-04-27 A | 100% |  | 2017-04-27 | 2017-04-27 | 1d |  | 1.92h | 1.92h |
| 206 | 12.6.1.1 | 完善统计工具开发 | manual | 1d | 2017-04-27 A | 2017-04-27 A | 100% |  | 2017-04-27 | 2017-04-27 | 1d | 胡明昊 [24%] | 1.92h | 1.92h |
| 207 | 12.6.2 | 第二次管理 | manual | 1d | 2017-05-05 A | 2017-05-05 A | 100% |  | 2017-05-04 | 2017-05-04 | 1d | 刘晔 [10%]; 汪晓燕 [10%] | 1.6h | 1.6h |
| 208 | 12.6.3 | 第三次管理 | manual | 1d | 2017-05-12 A | 2017-05-12 A | 100% |  | 2017-05-11 | 2017-05-11 | 1d | 刘晔 [7%] | 0.56h | 0.56h |
| 209 | 12.7 | 软件测试分析实验分析 | manual | 1d | 2017-05-19 A | 2017-05-19 A | 100% |  | 2017-05-18 | 2017-05-18 | 1d | 汪晓燕 [10%] | 0.8h | 0.8h |
| 210 | 12.8 | 软件测试评审实验分析 | manual | 1d | 2017-05-25 A | 2017-05-25 A | 100% |  | 2017-05-25 | 2017-05-25 | 1d | 汪晓燕 [10%] | 0.8h | 0.8h |
| 211 | 12.9 | 软件测试复评审实验分析 | manual | 1d | 2017-03-14 | 2017-03-14 |  |  | 2017-06-01 | 2017-06-01 | 1d | 刘晔; 汪晓燕 | 16h |  |
| 212 | 12.10 | 软件演示与测评实验分析 | manual | 1d | 2017-03-14 | 2017-03-14 |  |  | 2017-06-08 | 2017-06-08 | 1d | 汪晓燕; 刘晔 | 16h |  |
